# temp

Schedule from MS Project, 2024-02-21 to 2024-04-24, costs in ₫, A marks actual dates.

## Calendars

- Standard: Mon-Fri 08:00-12:00, 13:00-17:00; Sat-Sun off. Exceptions (off unless hours are given): 2024-04-18 (Giỗ Tỗ Hùng Vương).

## Resources

| Resource | Group | Rate |
| --- | --- | --- |
| Nguyễn Ngọc Cảnh Phong - Quản Lý | Quản Lý | 100000 |
| Trần Văn Huy - Lập Trình Viên 1 | Lập Trình | 40000 |
| Hoàng Thanh Tùng- Kiểm Thử Viên 1 | Kiểm Thử | 50000 |
| Trần Văn Huy - Kĩ Thuật Viên | Kĩ Thuật | 50000 |
| Đỗ Thị Diệu Ái - Phân Tích Viên 2 | Phân Tích | 55000 |
| Hoàng Thị Kiều Oanh - Thiết Kế Giao Diện 2 | Giao Diện | 40000 |
| Nguyễn Ngọc Cảnh Phong - Lập Trình Viên 2 | Lập Trình | 40000 |
| Hoàng Thanh Tùng - Phân Tích Viên 1 | Phân Tích | 55000 |
| Lê Thị Bảo Trâm - Thiết Kế Giao Diện 1 | Giao Diện | 40000 |
| Nguyễn Thị Minh Thư- Kiểm Thử Viên 2 | Kiểm Thử | 40000 |
| Nguyễn Ngọc Cảnh Phong - Thiết Kế Dữ Liệu 1 | Dữ Liệu | 70000 |
| Đỗ Thị Diệu Ái - Thiết Kế Dữ Liệu 2 | Dữ Liệu | 70000 |
| Hoàng Thị Kiều Oanh - Phân Tích Viên 3 | Phân Tích | 55000 |
| Nguyễn Thị Minh Thư - Thiết Kế Dữ Liệu 3 | Dữ Liệu | 70000 |

## Schedule

| ID | WBS | Task | Type | Duration | Start | Finish | Predecessors | Complete | Remaining | Total slack | Constraint | Resources | Work | Actual work | Cost | Actual cost |
| --- | --- | --- | --- | --- | --- | --- | --- | --- | --- | --- | --- | --- | --- | --- | --- | --- |
| 1 | 1 | **XÂY DỰNG HỆ THỐNG QUẢN LÝ KẾT NỐI VÀ CUNG CẤP GIA SƯ TP-HUẾ** |  | 45d | 2024-02-21 A | 2024-04-24 |  | 4% | 43.09d | 0d |  |  | 632h | 8h | 29,680,000 | 800,000 |
| 2 | 1.1 | Bản kế hoạch dự án |  | 1d | 2024-02-21 A | 2024-02-21 A |  | 100% |  |  | finish no earlier than 2024-02-21 | Nguyễn Ngọc Cảnh Phong - Quản Lý | 8h | 8h | 800,000 | 800,000 |
| 3 | 1.2 | Thời gian phê duyệt dự án |  | 1d | 2024-02-22 A | 2024-02-22 A | 2 | 100% |  |  | start no earlier than 2024-02-22 |  |  |  |  |  |
| 4 | 1.3 | **Phân Tích** |  | 9d | 2024-02-21 | 2024-03-05 |  |  |  | 0d |  |  | 136h |  | 7,840,000 |  |
| 5 | 1.3.1 | Thu Thập, Phân Tích Nhu Cầu Khách Hàng |  | 3d | 2024-02-21 | 2024-02-23 |  |  |  | 0d |  | Hoàng Thanh Tùng - Phân Tích Viên 1; Đỗ Thị Diệu Ái - Phân Tích Viên 2 | 48h |  | 2,640,000 |  |
| 6 | 1.3.2 | Lên Ý Tưởng, Phân Tích Thông Số Kĩ Thuật |  | 3d | 2024-02-26 | 2024-02-28 | 5 |  |  | 0d |  | Hoàng Thanh Tùng - Phân Tích Viên 1; Đỗ Thị Diệu Ái - Phân Tích Viên 2 | 48h |  | 2,640,000 |  |
| 7 | 1.3.3 | Lập Bảng Báo Cáo, Phản Hồi Khách Hàng |  | 2d | 2024-02-29 | 2024-03-01 | 6 |  |  | 0d |  | Hoàng Thanh Tùng - Phân Tích Viên 1; Đỗ Thị Diệu Ái - Phân Tích Viên 2 | 32h |  | 1,760,000 |  |
| 8 | 1.3.4 | Chờ Phê Duyệt Để Tiến Hành |  | 1d | 2024-03-04 | 2024-03-04 | 7 |  |  | 0d |  | Nguyễn Ngọc Cảnh Phong - Quản Lý | 8h |  | 800,000 |  |
| 9 | 1.3.5 | Hoàn Thành Phân Tích | milestone, manual | 0d | 2024-03-05 | 2024-03-05 | 8 |  |  |  |  | Đỗ Thị Diệu Ái - Phân Tích Viên 2 |  |  |  |  |
| 10 | 1.4 | **Thiết kế** |  | 8d | 2024-03-05 | 2024-03-15 |  |  |  | 0d |  |  | 88h |  | 4,000,000 |  |
| 11 | 1.4.1 | Thiết Kế Cấu Trúc Phần Mềm |  | 2d | 2024-03-05 | 2024-03-06 | 9 |  |  | 0d |  | Lê Thị Bảo Trâm - Thiết Kế Giao Diện 1 | 16h |  | 640,000 |  |
| 12 | 1.4.2 | Thiết Kế Giao Diện |  | 2d | 2024-03-07 | 2024-03-08 | 11 |  |  | 0d |  | Hoàng Thị Kiều Oanh - Thiết Kế Giao Diện 2 | 16h |  | 640,000 |  |
| 13 | 1.4.3 | Thiết Kế Cơ Sở Dữ Liệu |  | 2d | 2024-03-11 | 2024-03-12 | 12 |  |  | 0d |  | Lê Thị Bảo Trâm - Thiết Kế Giao Diện 1; Hoàng Thị Kiều Oanh - Thiết Kế Giao Diện 2 | 32h |  | 1,280,000 |  |
| 14 | 1.4.4 | Thiết Kế Thành Phần Hệ Thống |  | 1d | 2024-03-13 | 2024-03-13 | 13 |  |  | 0d |  | Lê Thị Bảo Trâm - Thiết Kế Giao Diện 1; Hoàng Thị Kiều Oanh - Thiết Kế Giao Diện 2 | 16h |  | 640,000 |  |
| 15 | 1.4.5 | Chờ Phê Duyệt Để Tiến Hành |  | 1d | 2024-03-14 | 2024-03-14 | 14 |  |  | 0d |  | Nguyễn Ngọc Cảnh Phong - Quản Lý | 8h |  | 800,000 |  |
| 16 | 1.4.6 | Hoàn Thành Thiết kế | milestone, manual | 0d | 2024-03-15 | 2024-03-15 | 15 |  |  |  |  |  |  |  |  |  |
| 17 | 1.5 | **Triển Khai** |  | 20d | 2024-03-15 | 2024-04-12 |  |  |  | 0d |  |  | 320h |  | 12,800,000 |  |
| 18 | 1.5.1 | Triển Khai Logic Hệ Thông |  | 5d | 2024-03-15 | 2024-03-21 | 16 |  |  | 0d |  | Trần Văn Huy - Lập Trình Viên 1; Nguyễn Ngọc Cảnh Phong - Lập Trình Viên 2 | 80h |  | 3,200,000 |  |
| 19 | 1.5.2 | Phát Triển Các Thành Phần CSDL |  | 5d | 2024-03-22 | 2024-03-28 | 18 |  |  | 0d |  | Trần Văn Huy - Lập Trình Viên 1; Nguyễn Ngọc Cảnh Phong - Lập Trình Viên 2 | 80h |  | 3,200,000 |  |
| 20 | 1.5.3 | Lập Trình Hệ Thống |  | 5d | 2024-03-29 | 2024-04-04 | 19 |  |  | 0d |  | Trần Văn Huy - Lập Trình Viên 1; Nguyễn Ngọc Cảnh Phong - Lập Trình Viên 2 | 80h |  | 3,200,000 |  |
| 21 | 1.5.4 | Đánh Giá Và Tối Ưu Mã Nguồn |  | 5d | 2024-04-05 | 2024-04-11 | 20 |  |  | 0d |  | Trần Văn Huy - Lập Trình Viên 1; Nguyễn Ngọc Cảnh Phong - Lập Trình Viên 2 | 80h |  | 3,200,000 |  |
| 22 | 1.5.5 | Hoàn Thành Lập Trình | milestone, manual | 0d | 2024-04-12 | 2024-04-12 | 21 |  |  |  |  |  |  |  |  |  |
| 23 | 1.6 | **Kiểm Thử** |  | 6d | 2024-04-12 | 2024-04-23 |  |  |  | 0d |  |  | 64h |  | 3,440,000 |  |
| 24 | 1.6.1 | Lập Bảng Kế Hoạch Kiểm Thử |  | 1d | 2024-04-12 | 2024-04-12 | 22 |  |  | 0d |  | Hoàng Thanh Tùng- Kiểm Thử Viên 1 | 8h |  | 400,000 |  |
| 25 | 1.6.2 | Viết Và Tiến Hành Các Ca Kiểm Thử |  | 1d | 2024-04-15 | 2024-04-15 | 24 |  |  | 0d |  | Hoàng Thanh Tùng- Kiểm Thử Viên 1 | 8h |  | 400,000 |  |
| 26 | 1.6.3 | Kiểm Thử Toàn Hệ Thống |  | 1d | 2024-04-16 | 2024-04-16 | 25 |  |  | 0d |  | Hoàng Thanh Tùng- Kiểm Thử Viên 1 | 8h |  | 400,000 |  |
| 27 | 1.6.4 | Xác Định Và Sữa Lỗi |  | 2d | 2024-04-17 | 2024-04-19 | 26 |  |  | 0d |  | Hoàng Thanh Tùng- Kiểm Thử Viên 1; Trần Văn Huy - Lập Trình Viên 1 | 32h |  | 1,440,000 |  |
| 28 | 1.6.5 | Đánh Giá Cuối Cùng |  | 1d | 2024-04-22 | 2024-04-22 | 27 |  |  | 0d |  | Nguyễn Ngọc Cảnh Phong - Quản Lý | 8h |  | 800,000 |  |
| 29 | 1.6.6 | Hoàn Thành Kiểm Thử | milestone, manual | 0d | 2024-04-23 | 2024-04-23 | 28 |  |  |  |  |  |  |  |  |  |

| ID | WBS | Task | Duration | Start | Finish | Predecessors | Total slack | Resources | Work | Cost |
| --- | --- | --- | --- | --- | --- | --- | --- | --- | --- | --- |
| 30 | 1.7 | **Bàn Giao** | 2d | 2024-04-23 | 2024-04-24 |  | 0d |  | 16h | 800,000 |
| 31 | 1.7.1 | Cài Đặt Phần Mềm | 1d | 2024-04-23 | 2024-04-23 | 29 | 0d | Trần Văn Huy - Kĩ Thuật Viên | 8h | 400,000 |
| 32 | 1.7.2 | Hướng Dẫn Phầm Mềm | 1d | 2024-04-24 | 2024-04-24 | 31 | 0d | Trần Văn Huy - Kĩ Thuật Viên | 8h | 400,000 |
